# ProjetoAshtanga

How a schedule from MS Project changed from version to version. A marks actual dates.

## Version 1 (saved 2019-10-30)

Note of the change: Create ProjetoAshtanga.mpp

| ID | WBS | Task | Duration | Start | Finish | Predecessors | Total float |
| --- | --- | --- | --- | --- | --- | --- | --- |
| 1 | 1 | **Projeto AshTanga** | 75.5d? | 2019-09-02 08:00 | 2019-12-16 12:00 |  |  |
| 2 | 1.1 | **Prospecção** | 15d | 2019-09-02 08:00 | 2019-09-20 20:00 |  | 18d |
| 3 | 1.1.1 | **PTEC** | 6d | 2019-09-02 08:00 | 2019-09-09 20:00 |  | 18d |
| 4 |  | Estudar domínio de aplicação | 1d | 2019-09-02 08:00 | 2019-09-02 17:00 |  | 18d |
| 5 |  | Reunir-se com o fornecedor de requisitos | 1.12d | 2019-09-02 18:00 | 2019-09-04 21:00 | 4 | 18d |
| 6 |  | Redigir PTEC | 1d | 2019-09-05 08:00 | 2019-09-05 17:00 | 5 | 18d |
| 7 |  | Revisar PTEC | 1d | 2019-09-05 18:00 | 2019-09-09 20:00 | 6 | 18d |
| 8 |  | Aprovar PTEC | 0d | 2019-09-09 20:00 | 2019-09-09 20:00 | 7 | 18.88d |
| 9 | 1.1.2 | **Est. Prel. Tam** | 6d | 2019-09-09 20:00 | 2019-09-17 20:00 |  | 60d |
| 10 |  | Estimar tamanho do projeto | 1d | 2019-09-09 20:00 | 2019-09-12 22:00 | 7 | 60d |
| 11 |  | Revisar estimativa de tamanho do projeto | 2d | 2019-09-13 08:00 | 2019-09-17 20:00 | 10 | 60d |
| 12 | 1.1.3 | **Est. Prel. Cronograma e orçamento** | 3d | 2019-09-18 08:00 | 2019-09-20 20:00 |  | 60d |
| 13 |  | Elaborar cronograma e orçamento preliminares | 1d | 2019-09-18 08:00 | 2019-09-18 17:00 | 9 | 60d |
| 14 |  | Revisar cronograma e orçamento preliminares | 1d | 2019-09-18 18:00 | 2019-09-20 20:00 | 13 | 60d |
| 15 | 1.2 | **Análise** | 37d | 2019-09-10 08:00 | 2019-10-30 17:00 |  | 1d |
| 16 | 1.2.1 | **Documentod de requisitos** | 4.75d | 2019-09-10 08:00 | 2019-09-16 15:00 |  | 18.25d |
| 17 |  | Reunir-se com o fornecedor de requisitos | 0.75d | 2019-09-10 08:00 | 2019-09-10 15:00 | 8 | 18.88d |
| 18 |  | Elaborar DRE | 2d | 2019-09-10 15:00 | 2019-09-12 15:00 | 17 | 18.88d |
| 19 |  | Revisar DRE | 0.38d | 2019-09-12 15:00 | 2019-09-13 15:00 | 18 | 18.25d |
| 20 |  | Submeter DRE para aprovação | 0.38d | 2019-09-13 15:00 | 2019-09-16 15:00 | 19 | 18.25d |
| 21 | 1.2.2 | **MRB** | 1d | 2019-10-29 20:00 | 2019-10-30 17:00 |  | 0d |
| 22 |  | Elaborar MRB | 1d | 2019-10-29 20:00 | 2019-10-30 12:00 | 20FS+2.5% |  |
| 23 |  | Revisar MRB | 1d | 2019-10-30 14:00 | 2019-10-31 14:00 | 22 |  |
| 24 | 1.2.3 | **Plano do projeto** | 8.25d | 2019-09-16 15:00 | 2019-09-26 19:00 |  | 25d |
| 25 |  | Elaborar plano do projeto | 1.25d | 2019-09-16 15:00 | 2019-09-17 17:00 | 20 | 25d |
| 26 |  | Revisar plano do projeto | 2.75d | 2019-09-17 18:00 | 2019-09-26 19:00 | 25 | 25d |
| 27 | 1.3 | **Projeto** | 11d | 2019-09-26 20:00 | 2019-10-11 17:00 |  | 25d |
| 28 | 1.3.1 | **Diagrama de classes** | 4d | 2019-09-26 20:00 | 2019-10-02 17:00 |  | 25d |
| 29 |  | Elaborar Diagrama de classes | 0.62d | 2019-09-26 20:00 | 2019-09-30 21:00 | 26 | 25d |
| 30 |  | Revisar Diagrama de classes | 1.12d | 2019-10-01 08:00 | 2019-10-02 09:00 | 29 | 25.88d |
| 31 |  | Atualizar MRB | 0.38d | 2019-10-02 14:00 | 2019-10-02 17:00 | 30 | 52d |
| 32 | 1.3.2 | **Modelo entidade relacionamento** | 7d | 2019-10-02 18:00 | 2019-10-11 17:00 |  | 25d |
| 33 |  | Elaborar MER | 2.62d | 2019-10-02 18:00 | 2019-10-10 21:00 | 30 | 25d |
| 34 |  | Revisar MER | 0.38d | 2019-10-11 14:00 | 2019-10-11 17:00 | 33 | 25d |
| 35 | 1.4 | **Implementação** | 46.25d? | 2019-09-16 15:00 | 2019-11-19 22:00 |  | 18.5d |
| 36 | 1.4.1 | **Release 00** | 1d? | 2019-10-31 08:00 | 2019-10-31 17:00 |  | 31.5d |
| 37 |  | Entregar os documentos | 1d? | 2019-10-31 08:00 | 2019-10-31 17:00 | 20, 26, 23 | 31.5d |
| 38 | 1.4.2 | **Release 01** | 39.25d? | 2019-09-16 15:00 | 2019-11-08 21:00 |  | 18.88d |
| 39 |  | Implementar RFS01 | 1.88d | 2019-10-14 08:00 | 2019-10-15 16:00 | 34 | 25.12d |
| 40 |  | Implementar RFS02 | 1.38d | 2019-10-15 20:00 | 2019-10-22 21:00 | 39 | 25d |
| 41 |  | Implementar RFS03 | 1.5d | 2019-10-23 14:00 | 2019-10-28 17:00 | 40 | 25d |
| 42 |  | Implementar RFS04 | 2.25d | 2019-10-28 20:00 | 2019-11-07 22:00 | 41 | 25d |
| 43 |  | Implementar RFS10 | 2.25d? | 2019-09-16 15:00 | 2019-09-24 15:00 | 20 | 18.25d |
| 44 |  | Testar RFS01 | 0.12d? | 2019-10-15 16:00 | 2019-10-15 17:00 | 39 | 43.5d |
| 45 |  | Testar RFS02 | 0.33d? | 2019-10-23 08:00 | 2019-10-23 10:40 | 40 | 38.17d |
| 46 |  | Testar RFS03 | 0.25d? | 2019-10-29 14:00 | 2019-10-29 16:00 | 41 | 33.12d |
| 47 |  | Testar RFS04 | 0.12d? | 2019-11-08 20:00 | 2019-11-08 21:00 | 42 | 25d |
| 48 |  | Testar RFS10 | 0.12d? | 2019-09-24 15:00 | 2019-09-24 16:00 | 43 | 18.69d |
| 49 |  | Atualizar Status Report | 0.12d? | 2019-09-24 16:00 | 2019-09-24 17:00 | 48 | 18.69d |
| 50 | 1.4.3 | **Release 02** | 21.92d | 2019-09-25 14:00 | 2019-10-25 13:20 |  | 18.12d |
| 51 |  | Implementar RFS05 | 1.75d | 2019-09-25 14:00 | 2019-10-01 16:00 | 49FS+5% | 18.12d |
| 52 |  | Implementar RFS06 | 1.62d | 2019-10-01 20:00 | 2019-10-09 21:00 | 51 | 18d |
| 53 |  | Implementar RFS07 | 2.75d | 2019-10-10 18:00 | 2019-10-21 19:00 | 52 | 18d |
| 54 |  | Implementar RFS08 | 1.62d | 2019-10-22 08:00 | 2019-10-23 14:00 | 53 | 18.46d |
| 55 |  | Implementar RFS09 | 1.67d | 2019-10-23 14:00 | 2019-10-25 10:20 | 54 | 18.46d |
| 56 |  | Testar RFS05 | 0.12d | 2019-10-01 20:00 | 2019-10-01 21:00 | 51 | 53d |
| 57 |  | Testar RFS06 | 0.12d | 2019-10-10 14:00 | 2019-10-10 15:00 | 52 | 46.25d |
| 58 |  | Testar RFS07 | 0.12d | 2019-10-21 20:00 | 2019-10-21 21:00 | 53 | 39d |
| 59 |  | Testar RFS08 | 0.12d | 2019-10-23 18:00 | 2019-10-23 19:00 | 54 | 37d |
| 60 |  | Testar RFS09 | 0.12d | 2019-10-25 10:20 | 2019-10-25 11:20 | 55 | 18.46d |
| 61 |  | Atualizar status Report | 0.12d | 2019-10-25 11:20 | 2019-10-25 13:20 | 60 | 18.46d |
| 62 | 1.4.4 | **Release 03** | 17d | 2019-10-25 18:00 | 2019-11-19 22:00 |  | 18d |
| 63 |  | Implementar RFS11 | 2.62d | 2019-10-25 18:00 | 2019-11-04 21:00 | 61 | 18d |
| 64 |  | Testar RFS11 | 0.12d | 2019-11-05 14:00 | 2019-11-05 15:00 | 63 | 18.25d |
| 65 |  | Atualizar Status Report | 2.75d | 2019-11-05 20:00 | 2019-11-19 22:00 | 64 | 18d |
| 66 | 1.5 | **Fechamento** | 3d | 2019-11-04 08:00 | 2019-11-06 17:00 |  |  |
| 67 |  | Elaborar termo de encerramento do projeto | 1d? | 2019-09-23 09:00 | 2019-09-24 09:00 | 49 |  |
| 68 |  | Revisar termo de encerramento | 1d? | 2019-09-24 09:00 | 2019-09-25 09:00 | 67 |  |
| 69 |  | Encaminhar termo para o cliente | 1d? | 2019-09-25 09:00 | 2019-09-26 09:00 | 68 |  |

## Version 2 (saved 2019-11-11)

Note of the change: Update ProjetoAshtanga.mpp

Last finish 2019-12-16 → 2020-01-03 (+18d). Complete tasks 0 → 13.

Removed: 24 Plano do projeto; 25 Elaborar plano do projeto; 26 Revisar plano do projeto; 27 Projeto; 28 Diagrama de classes; 29 Elaborar Diagrama de classes; 30 Revisar Diagrama de classes; 31 Atualizar MRB; 32 Modelo entidade relacionamento; 33 Elaborar MER; 34 Revisar MER; 36 Release 00; 37 Entregar os documentos; 66 Fechamento; 67 Elaborar termo de encerramento do projeto; 68 Revisar termo de encerramento; 69 Encaminhar termo para o cliente

Changed:

| ID | Task | Start | Finish | Duration | Complete | Total float | Predecessors | Other |
| --- | --- | --- | --- | --- | --- | --- | --- | --- |
| 1 | **Projeto AshTanga** | 2019-09-02 08:00 A | 2019-12-16 12:00 → 2020-01-03 14:00 (+18d) | 75.5d? → 89.62d? | 0% → 32% | none → 0d |  | baseline start none → 2019-09-02 08:00; baseline finish none → 2019-12-16 12:00 |
| 2 | **Prospecção** | 2019-09-02 08:00 A | 2019-09-20 20:00 → 2019-09-23 20:00 A (+3d) | 15d → 16d | 0% → 100% | 18d → none |  | baseline start none → 2019-09-02 08:00; baseline finish none → 2019-09-20 20:00 |
| 3 | **PTEC** | 2019-09-02 08:00 A | 2019-09-09 20:00 → 2019-09-10 20:00 A (+1d) | 6d → 7d | 0% → 100% | 18d → none |  | baseline start none → 2019-09-02 08:00; baseline finish none → 2019-09-09 20:00 |
| 4 | Estudar domínio de aplicação | 2019-09-02 08:00 A | 2019-09-02 17:00 → 2019-09-03 09:00 A (+1d) | 1d → 1.12d | 0% → 100% | 18d → none |  | baseline start none → 2019-09-02 08:00; baseline finish none → 2019-09-02 17:00 |
| 5 | Reunir-se com o fornecedor de requisitos | 2019-09-02 18:00 → 2019-09-03 18:00 A (+1d) | 2019-09-04 21:00 → 2019-09-05 21:00 A (+1d) |  | 0% → 100% | 18d → none |  | baseline start none → 2019-09-02 18:00; baseline finish none → 2019-09-04 21:00 |
| 6 | Redigir PTEC | 2019-09-05 08:00 → 2019-09-06 08:00 A (+1d) | 2019-09-05 17:00 → 2019-09-06 17:00 A (+1d) |  | 0% → 100% | 18d → none |  | baseline start none → 2019-09-05 08:00; baseline finish none → 2019-09-05 17:00 |
| 7 | Revisar PTEC | 2019-09-05 18:00 → 2019-09-06 18:00 A (+1d) | 2019-09-09 20:00 → 2019-09-10 20:00 A (+1d) |  | 0% → 100% | 18d → none |  | baseline start none → 2019-09-05 18:00; baseline finish none → 2019-09-09 20:00 |
| 8 | Aprovar PTEC | 2019-09-09 20:00 → 2019-09-10 20:00 A (+1d) | 2019-09-09 20:00 → 2019-09-10 20:00 A (+1d) |  | 0% → 100% | 18.88d → none |  | baseline start none → 2019-09-09 20:00; baseline finish none → 2019-09-09 20:00 |
| 9 | **Est. Prel. Tam** | 2019-09-09 20:00 → 2019-09-10 20:00 A (+1d) | 2019-09-17 20:00 → 2019-09-18 20:00 A (+1d) |  | 0% → 100% | 60d → none |  | baseline start none → 2019-09-09 20:00; baseline finish none → 2019-09-17 20:00 |
| 10 | Estimar tamanho do projeto | 2019-09-09 20:00 → 2019-09-10 20:00 A (+1d) | 2019-09-12 22:00 → 2019-09-13 22:00 A (+1d) |  | 0% → 100% | 60d → none |  | baseline start none → 2019-09-09 20:00; baseline finish none → 2019-09-12 22:00 |
| 11 | Revisar estimativa de tamanho do projeto | 2019-09-13 08:00 → 2019-09-16 08:00 A (+3d) | 2019-09-17 20:00 → 2019-09-18 20:00 A (+1d) |  | 0% → 100% | 60d → none |  | baseline start none → 2019-09-13 08:00; baseline finish none → 2019-09-17 20:00 |
| 12 | **Est. Prel. Cronograma e orçamento** | 2019-09-18 08:00 → 2019-09-19 08:00 A (+1d) | 2019-09-20 20:00 → 2019-09-23 20:00 A (+3d) |  | 0% → 100% | 60d → none |  | baseline start none → 2019-09-18 08:00; baseline finish none → 2019-09-20 20:00 |
| 13 | Elaborar cronograma e orçamento preliminares | 2019-09-18 08:00 → 2019-09-19 08:00 A (+1d) | 2019-09-18 17:00 → 2019-09-19 17:00 A (+1d) |  | 0% → 100% | 60d → none |  | baseline start none → 2019-09-18 08:00; baseline finish none → 2019-09-18 17:00 |
| 14 | Revisar cronograma e orçamento preliminares | 2019-09-18 18:00 → 2019-09-19 18:00 A (+1d) | 2019-09-20 20:00 → 2019-09-23 20:00 A (+3d) |  | 0% → 100% | 60d → none |  | baseline start none → 2019-09-18 18:00; baseline finish none → 2019-09-20 20:00 |
| 15 | **Análise** | 2019-09-10 08:00 → 2019-09-11 08:00 (+1d) | 2019-10-30 17:00 → 2019-09-16 17:00 (-44d) | 37d → 4d |  | 1d → none |  | baseline start none → 2019-09-10 08:00; baseline finish none → 2019-10-30 17:00 |
| 16 | **Documento de requisitos** | 2019-09-10 08:00 → 2019-09-11 08:00 (+1d) | 2019-09-16 15:00 → 2019-09-17 15:00 (+1d) |  |  | 18.25d → 31.25d |  | was named Documentod de requisitos; baseline start none → 2019-09-10 08:00; baseline finish none → 2019-09-16 15:00 |
| 17 | Reunir-se com o fornecedor de requisitos | 2019-09-10 08:00 → 2019-09-11 08:00 (+1d) | 2019-09-10 15:00 → 2019-09-11 15:00 (+1d) |  |  | 18.88d → 31.88d |  | baseline start none → 2019-09-10 08:00; baseline finish none → 2019-09-10 15:00 |
| 18 | Elaborar DRE | 2019-09-10 15:00 → 2019-09-11 15:00 (+1d) | 2019-09-12 15:00 → 2019-09-13 15:00 (+1d) |  |  | 18.88d → 31.88d |  | baseline start none → 2019-09-10 15:00; baseline finish none → 2019-09-12 15:00 |
| 19 | Revisar DRE | 2019-09-12 15:00 → 2019-09-13 15:00 (+1d) | 2019-09-13 15:00 → 2019-09-16 15:00 (+3d) |  |  | 18.25d → 31.25d |  | baseline start none → 2019-09-12 15:00; baseline finish none → 2019-09-13 15:00 |
| 20 | Submeter DRE para aprovação | 2019-09-13 15:00 → 2019-09-16 15:00 (+3d) | 2019-09-16 15:00 → 2019-09-17 15:00 (+1d) |  |  | 18.25d → 31.25d |  | baseline start none → 2019-09-13 15:00; baseline finish none → 2019-09-16 15:00 |
| 21 | **MRB** | 2019-10-29 20:00 → 2019-09-12 08:00 (-47d) | 2019-10-30 17:00 → 2019-09-13 12:00 (-47d) | 1d → 1.5d |  | 0d → none |  | baseline start none → 2019-10-29 20:00; baseline finish none → 2019-10-30 17:00 |
| 22 | Elaborar MRB | 2019-10-29 20:00 → 2019-09-12 08:00 (-47d) | 2019-10-30 12:00 → 2019-09-12 17:00 (-48d) |  |  |  | 20FS+2.5% → none | baseline start none → 2019-10-29 20:00; baseline finish none → 2019-10-30 12:00 |
| 23 | Revisar MRB | 2019-10-30 14:00 → 2019-09-12 08:00 (-48d) | 2019-10-31 14:00 → 2019-09-12 11:00 (-49d) |  |  |  | 22 → none | baseline start none → 2019-10-30 14:00; baseline finish none → 2019-10-30 17:00 |
| 24 | **Implementação** | 2019-09-16 15:00 → 2019-10-10 08:00 A (+24d) | 2019-11-19 22:00 → 2020-01-03 14:00 (+45d) | 46.25d? → 61.62d? | 0% → 14% | 18.5d → none |  | baseline start none → 2019-09-16 15:00; baseline finish none → 2019-11-19 22:00 |
| 25 | **Release 01** | 2019-09-16 15:00 → 2019-10-10 08:00 A (+24d) | 2019-11-08 21:00 → 2019-11-05 12:00 (-3d) | 39.25d? → 18.5d? | 0% → 36% | 18.88d → none |  | baseline start none → 2019-09-16 15:00; baseline finish none → 2019-11-08 21:00 |
| 26 | Implementar RFS01 | 2019-10-14 08:00 → 2019-10-10 08:00 A (-4d) | 2019-10-15 16:00 → 2019-10-11 16:00 A (-4d) |  | 0% → 100% | 25.12d → none | Revisar MER → none | baseline start none → 2019-10-14 08:00; baseline finish none → 2019-10-15 16:00 |
| 27 | Implementar RFS02 | 2019-10-15 20:00 → 2019-10-11 20:00 A (-4d) | 2019-10-22 21:00 → 2019-10-18 21:00 A (-4d) |  | 0% → 100% | 25d → none |  | baseline start none → 2019-10-15 20:00; baseline finish none → 2019-10-22 21:00 |
| 28 | Implementar RFS03 | 2019-10-23 14:00 → 2019-10-21 08:00 (-2d) | 2019-10-28 17:00 → 2019-10-22 12:00 (-6d) |  |  | 25d → 3.5d |  | resources Leonardo [133.3%] → none; baseline start none → 2019-10-23 14:00; baseline finish none → 2019-10-28 17:00 |
| 29 | Implementar RFS04 | 2019-10-28 20:00 → 2019-10-22 20:00 (-6d) | 2019-11-07 22:00 → 2019-11-01 22:00 (-6d) |  |  | 25d → 3d |  | baseline start none → 2019-10-28 20:00; baseline finish none → 2019-11-07 22:00 |
| 30 | Implementar RFS10 | 2019-09-16 15:00 → 2019-10-10 14:00 (+24d) | 2019-09-24 15:00 → 2019-10-17 17:00 (+23d) |  |  | 18.25d → 15d |  | baseline start none → 2019-09-16 15:00; baseline finish none → 2019-09-24 15:00 |
| 31 | Testar RFS01 | 2019-10-15 16:00 → 2019-10-11 16:00 A (-4d) | 2019-10-15 17:00 → 2019-10-11 17:00 A (-4d) |  | 0% → 100% | 43.5d → none |  | baseline start none → 2019-10-15 16:00; baseline finish none → 2019-10-15 17:00 |
| 32 | Testar RFS02 | 2019-10-23 08:00 → 2019-10-21 08:00 A (-2d) | 2019-10-23 10:40 → 2019-10-21 10:40 A (-2d) |  | 0% → 100% | 38.17d → none |  | resources Gabriel Marra [37.5%] → none; baseline start none → 2019-10-23 08:00; baseline finish none → 2019-10-23 10:40 |
| 33 | Testar RFS03 | 2019-10-29 14:00 → 2019-10-22 13:00 (-7d) | 2019-10-29 16:00 → 2019-10-22 15:00 (-7d) |  |  | 33.12d → 13d |  | resources Leonardo [50%] → none; baseline start none → 2019-10-29 14:00; baseline finish none → 2019-10-29 16:00 |
| 34 | Testar RFS04 | 2019-11-08 20:00 → 2019-11-04 20:00 (-4d) | 2019-11-08 21:00 → 2019-11-04 21:00 (-4d) |  |  | 25d → 3d |  | baseline start none → 2019-11-08 20:00; baseline finish none → 2019-11-08 21:00 |
| 35 | Testar RFS10 | 2019-09-24 15:00 → 2019-10-18 08:00 (+24d) | 2019-09-24 16:00 → 2019-10-18 09:00 (+24d) |  |  | 18.69d → 15.44d |  | baseline start none → 2019-09-24 15:00; baseline finish none → 2019-09-24 16:00 |
| 36 | Atualizar Status Report | 2019-09-24 16:00 → 2019-10-18 09:00 (+24d) | 2019-09-24 17:00 → 2019-10-18 10:00 (+24d) |  |  | 18.69d → 15.44d |  | baseline start none → 2019-09-24 16:00; baseline finish none → 2019-09-24 17:00 |
| 37 | **Release 02** | 2019-09-25 14:00 → 2019-11-05 14:00 (+41d) | 2019-10-25 13:20 → 2019-12-05 13:20 (+41d) |  |  | 18.12d → 3.12d | none → 25 | baseline start none → 2019-09-25 14:00; baseline finish none → 2019-10-25 13:20 |
| 38 | Implementar RFS05 | 2019-09-25 14:00 → 2019-11-05 14:00 (+41d) | 2019-10-01 16:00 → 2019-11-11 16:00 (+41d) |  |  | 18.12d → 3.12d |  | baseline start none → 2019-09-25 14:00; baseline finish none → 2019-10-01 16:00 |
| 39 | Implementar RFS06 | 2019-10-01 20:00 → 2019-11-11 20:00 (+41d) | 2019-10-09 21:00 → 2019-11-19 21:00 (+41d) |  |  | 18d → 3d |  | baseline start none → 2019-10-01 20:00; baseline finish none → 2019-10-09 21:00 |
| 40 | Implementar RFS07 | 2019-10-10 18:00 → 2019-11-20 18:00 (+41d) | 2019-10-21 19:00 → 2019-11-29 19:00 (+39d) |  |  | 18d → 3d |  | baseline start none → 2019-10-10 18:00; baseline finish none → 2019-10-21 19:00 |
| 41 | Implementar RFS08 | 2019-10-22 08:00 → 2019-12-02 08:00 (+41d) | 2019-10-23 14:00 → 2019-12-03 14:00 (+41d) |  |  | 18.46d → 3.46d |  | baseline start none → 2019-10-22 08:00; baseline finish none → 2019-10-23 14:00 |
| 42 | Implementar RFS09 | 2019-10-23 14:00 → 2019-12-03 14:00 (+41d) | 2019-10-25 10:20 → 2019-12-05 10:20 (+41d) |  |  | 18.46d → 3.46d |  | baseline start none → 2019-10-23 14:00; baseline finish none → 2019-10-25 10:20 |
| 43 | Testar RFS05 | 2019-10-01 20:00 → 2019-11-11 20:00 (+41d) | 2019-10-01 21:00 → 2019-11-11 21:00 (+41d) |  |  | 53d → 20d |  | baseline start none → 2019-10-01 20:00; baseline finish none → 2019-10-01 21:00 |
| 44 | Testar RFS06 | 2019-10-10 14:00 → 2019-11-20 14:00 (+41d) | 2019-10-10 15:00 → 2019-11-20 15:00 (+41d) |  |  | 46.25d → 14.25d |  | baseline start none → 2019-10-10 14:00; baseline finish none → 2019-10-10 15:00 |
| 45 | Testar RFS07 | 2019-10-21 20:00 → 2019-11-29 20:00 (+39d) | 2019-10-21 21:00 → 2019-11-29 21:00 (+39d) |  |  | 39d → 6d |  | baseline start none → 2019-10-21 20:00; baseline finish none → 2019-10-21 21:00 |
| 46 | Testar RFS08 | 2019-10-23 18:00 → 2019-12-03 18:00 (+41d) | 2019-10-23 19:00 → 2019-12-03 19:00 (+41d) |  |  | 37d → 4d |  | baseline start none → 2019-10-23 18:00; baseline finish none → 2019-10-23 19:00 |
| 47 | Testar RFS09 | 2019-10-25 10:20 → 2019-12-05 10:20 (+41d) | 2019-10-25 11:20 → 2019-12-05 11:20 (+41d) |  |  | 18.46d → 3.46d |  | baseline start none → 2019-10-25 10:20; baseline finish none → 2019-10-25 11:20 |
| 48 | Atualizar status Report | 2019-10-25 11:20 → 2019-12-05 11:20 (+41d) | 2019-10-25 13:20 → 2019-12-05 13:20 (+41d) |  |  | 18.46d → 3.46d |  | baseline start none → 2019-10-25 11:20; baseline finish none → 2019-10-25 13:20 |
| 49 | **Release 03** | 2019-10-25 18:00 → 2019-12-05 18:00 (+41d) | 2019-11-19 22:00 → 2019-12-30 22:00 (+41d) |  |  | 18d → 3d | none → 37 | baseline start none → 2019-10-25 18:00; baseline finish none → 2019-11-19 22:00 |
| 50 | Implementar RFS11 | 2019-10-25 18:00 → 2019-12-05 18:00 (+41d) | 2019-11-04 21:00 → 2019-12-13 21:00 (+39d) |  |  | 18d → 3d |  | baseline start none → 2019-10-25 18:00; baseline finish none → 2019-11-04 21:00 |
| 51 | Testar RFS11 | 2019-11-05 14:00 → 2019-12-16 14:00 (+41d) | 2019-11-05 15:00 → 2019-12-16 15:00 (+41d) |  |  | 18.25d → 3.25d |  | baseline start none → 2019-11-05 14:00; baseline finish none → 2019-11-05 15:00 |
| 52 | Atualizar Status Report | 2019-11-05 20:00 → 2019-12-16 20:00 (+41d) | 2019-11-19 22:00 → 2019-12-30 22:00 (+41d) |  |  | 18d → 3d |  | baseline start none → 2019-11-05 20:00; baseline finish none → 2019-11-19 22:00 |
